# Planning.mpp

Schedule from MS Project, 2017-11-10 to 2018-02-07, status date 2017-11-24, A marks actual dates.

## Calendars

- Estándar: Mon-Fri 09:00-13:00, 15:00-19:00; Sat-Sun off. Exceptions (off unless hours are given): 2017-11-18 09:00-13:00, 15:00-19:00.

## Resources

| Resource |
| --- |
| p |
| p33 |

## Schedule

| ID | WBS | Task | Type | Duration | Start | Finish | Predecessors | Complete | Baseline start | Baseline finish | Baseline duration | Resources | Work | Actual work |
| --- | --- | --- | --- | --- | --- | --- | --- | --- | --- | --- | --- | --- | --- | --- |
| 1 | 1 | Inicio del proyecto | milestone, manual | 0d | 2017-11-10 | 2017-11-10 |  |  | 2017-11-10 | 2017-11-10 | 0d |  |  |  |
| 2 | 2 | Redacción de la memoria |  | 65d | 2017-11-10 A | 2018-02-07 A | 1, 14FF | 100% | 2017-11-10 | 2018-01-31 | 60d | p [300%] | 1560h | 1560h |
| 3 | 3 | **Obtención de datos** |  | 16d | 2017-11-18 A | 2017-12-08 A | 1FS+6d | 100% | 2017-11-18 | 2017-12-12 | 18d |  | 296h | 296h |
| 4 | 3.1 | Recogida de tweets |  | 11d | 2017-11-18 A | 2017-12-01 A |  | 100% | 2017-11-18 | 2017-12-01 | 11d | p [300%] | 176h | 176h |
| 5 | 3.2 | Análisis inicial tweets |  | 5d | 2017-12-04 A | 2017-12-08 A | 4 | 100% | 2017-12-04 | 2017-12-12 | 7d | p [300%] | 120h | 120h |
| 6 | 4 | **Limpieza tweets** |  | 37d | 2017-12-08 A | 2018-01-29 A |  | 100% | 2017-12-13 | 2018-01-02 | 15d |  | 696h | 696h |
| 7 | 4.1 | Detección idioma |  | 16d | 2017-12-08 A | 2017-12-29 A | 5 | 100% | 2017-12-13 | 2018-01-02 | 15d | p | 128h | 128h |
| 8 | 4.2 | Detección topic |  | 35d | 2017-12-11 A | 2018-01-26 A | 5 | 100% | 2017-12-13 | 2018-01-02 | 15d | p | 280h | 280h |
| 9 | 4.3 | Detección de usuarios |  | 36d | 2017-12-11 A | 2018-01-29 A | 5 | 100% | 2017-12-13 | 2018-01-02 | 15d | p | 288h | 288h |
| 10 | 5 | **Modelo** |  | 23d | 2018-01-03 A | 2018-02-02 A |  | 100% | 2018-01-03 | 2018-01-16 | 10d |  | 276h | 276h |
| 11 | 5.1 | Construcción del modelo |  | 23d | 2018-01-03 A | 2018-02-02 A | 7, 8, 9 | 100% | 2018-01-03 | 2018-01-16 | 10d | p [150%] | 276h | 276h |
| 12 | 6 | **Informes y presentación de resultados** |  | 11d | 2018-01-18 A | 2018-02-01 A |  | 100% | 2018-01-11 | 2018-01-24 | 10d |  | 132h | 132h |
| 13 | 6.1 | Presentación de resultados |  | 11d | 2018-01-18 A | 2018-02-01 A | 11SS+6d | 100% | 2018-01-11 | 2018-01-24 | 10d | p [150%] | 132h | 132h |
| 14 | 7 | Entrega del proyecto | milestone, manual | 0d | 2018-01-30 | 2018-01-30 | 13 |  | 2018-01-30 | 2018-01-30 | 0d |  |  |  |
